# Software Biblioteca

Schedule from MS Project, 2018-04-09 to 2018-07-04, 2 hours a day, costs in €, A marks actual dates.

## Calendars

- Standard: Mon-Tue 13:30-15:30; Wed 09:00-12:30; Thu-Sun off. Exceptions (off unless hours are given): 2018-04-11 (não trabalhamos).

## Resources

| Resource | Group | Rate |
| --- | --- | --- |
| Flávio | RH | 5 |
| André | RH | 5 |
| Carlota | RH | 5 |
| Rodrigo | RH | 5 |

## Schedule

| ID | WBS | Task | Type | Duration | Start | Finish | Predecessors | Complete | Remaining | Total slack | Free slack | Constraint | Resources | Work | Actual work | Cost | Actual cost | Acção |
| --- | --- | --- | --- | --- | --- | --- | --- | --- | --- | --- | --- | --- | --- | --- | --- | --- | --- | --- |
| 1 | 1 | **Planeamento** |  | 8.5d? | 2018-04-09 08:00 A | 2018-04-25 10:30 |  | 60% | 3.42d? | 36.5d | 0d |  |  | 28.77h | 22.62h | 143.83 | 113.1 |  |
| 2 | 1.1 | Microsoft Project |  | 17h | 2018-04-09 13:30 A | 2018-04-25 10:30 |  | 47% | 9h | 36.5d | 0d | start no earlier than 2018-04-09 08:00 | Flávio [70%]; André [7%] | 7.87h | 5.17h | 39.33 | 25.85 | mais tempo |
| 3 | 1.2 | **Relatório Requisitos** |  | 6.75d | 2018-04-09 08:00 A | 2018-04-23 15:30 |  | 84% | 1.08d | 38.25d | 1.75d |  |  | 14.9h | 11.85h | 74.5 | 59.25 |  |
| 4 | 1.2.1 | Investigação no terreno |  | 0.5h | 2018-04-09 13:30 A | 2018-04-09 14:00 A |  | 100% |  |  |  |  | Flávio | 0.5h | 0.5h | 2.5 | 2.5 |  |
| 5 | 1.2.2 | Introdução |  | 5h | 2018-04-09 08:00 A | 2018-04-16 14:30 | 4 | 90% | 0.5h | 42.5d |  |  | André [40%]; Flávio [60%] | 4h | 3.8h | 20 | 19 |  |
| 6 | 1.2.3 | Requisitos Funcionais |  | 9h | 2018-04-10 13:30 A | 2018-04-18 10:00 | 4 | 95% | 0.45h | 39.5d | 1.25d | start no earlier than 2018-04-10 08:00 | André [60%]; Flávio [40%] | 7.5h | 7.05h | 37.5 | 35.25 | mais rh e mais tempo |
| 7 | 1.2.4 | Requisitos Não Funcionais |  | 2h | 2018-04-18 08:00 A | 2018-04-18 11:30 A | 4 | 100% |  |  |  | start no earlier than 2018-04-18 08:00 | André [90%]; Flávio [10%] | 0.5h | 0.5h | 2.5 | 2.5 |  |
| 8 | 1.2.5 | Diagrama Casos de Uso |  | 2h | 2018-04-23 13:30 | 2018-04-23 15:30 | 6, 7 |  |  | 38.25d |  | start no earlier than 2018-04-23 08:00 | André; Flávio [10%]; Rodrigo [10%] | 2.4h |  | 12 |  |  |
| 9 | 1.3 | **Relatório Planeamento** |  | 2.75d | 2018-04-17 08:00 A | 2018-04-18 12:30 |  | 94% | 0.16d | 39.25d | 2.75d |  |  | 6h | 5.6h | 30 | 28 |  |
| 10 | 1.3.1 | Planificação Geral do Projeto |  | 2h | 2018-04-18 09:00 A | 2018-04-18 11:00 |  | 80% | 0.4h | 40d |  | start no earlier than 2018-04-18 08:00 | André [50%]; Flávio [50%] | 2h | 1.6h | 10 | 8 | mais rh |
| 11 | 1.3.2 | Plano de riscos |  | 3h | 2018-04-18 09:30 A | 2018-04-18 12:30 |  | 99% | 0h | 39.25d |  | start no earlier than 2018-04-18 08:00 | Flávio [50%]; André [50%]; Rodrigo [20%] | 2h | 2h | 10 | 10 | mais rh e mais tempo |
| 12 | 1.3.3 | Matriz de Responsabilidades |  | 2h | 2018-04-17 08:00 A | 2018-04-17 17:00 A |  | 100% |  |  |  | start no earlier than 2018-04-17 08:00 | Flávio [90%]; André [10%] | 2h | 2h | 10 | 10 |  |
| 13 | 1.4 | **Relatório Scrum** |  | 1d? | 2018-04-09 13:30 | 2018-04-09 15:30 |  |  |  | 44d |  |  |  |  |  |  |  |  |
| 14 | 1.4.1 | Introdução |  | 1d? | 2018-04-09 13:30 | 2018-04-09 15:30 |  |  |  | 44d |  |  |  |  |  |  |  |  |
| 15 | 1.4.2 | stakeholders |  | 1d? | 2018-04-09 13:30 | 2018-04-09 15:30 |  |  |  | 44d |  |  |  |  |  |  |  |  |
| 16 | 1.4.3 | Product Backlog |  | 1d? | 2018-04-09 13:30 | 2018-04-09 15:30 |  |  |  | 44d |  |  |  |  |  |  |  |  |
| 17 | 1.4.4 | Sprints |  | 1d? | 2018-04-09 13:30 | 2018-04-09 15:30 |  |  |  | 44d |  |  |  |  |  |  |  |  |
| 18 | 1.5 | Conclusão do planeamento | milestone | 0d | 2018-04-25 10:30 | 2018-04-25 10:30 | 2, 3, 9 |  |  | 17.5d |  |  |  |  |  |  |  |  |
| 19 | 2 | **Sprint 1** |  | 10.75d? | 2018-04-09 13:30 | 2018-05-01 14:00 |  |  |  | 35d |  |  |  | 8.2h |  | 41 |  |  |
| 20 | 2.1 | **Investigação javafx** |  | 10.75d? | 2018-04-09 13:30 | 2018-05-01 14:00 |  |  |  | 35.25d |  |  |  | 7.2h |  | 36 |  |  |
| 21 | 2.1.1 | criação tabelas |  | 6h | 2018-04-25 08:00 | 2018-05-01 14:00 |  |  |  | 35.25d |  | start no earlier than 2018-04-25 08:00 | André; Flávio; Rodrigo | 7.2h |  | 36 |  |  |
| 22 | 2.1.2 | adicionar campos tabela |  | 0.5h | 2018-04-09 13:30 | 2018-04-09 14:00 |  |  |  | 45.75d |  |  |  |  |  |  |  |  |
| 23 | 2.1.3 | editar campos tabela |  | 1d? | 2018-04-09 13:30 | 2018-04-09 15:30 |  |  |  | 45d |  |  |  |  |  |  |  |  |
| 24 | 2.1.4 | apagar campos tabela |  | 1d? | 2018-04-09 13:30 | 2018-04-09 15:30 |  |  |  | 45d |  |  |  |  |  |  |  |  |

| ID | WBS | Task | Type | Duration | Start | Finish | Predecessors | Total slack | Free slack | Constraint | Resources | Work | Cost | Acção |
| --- | --- | --- | --- | --- | --- | --- | --- | --- | --- | --- | --- | --- | --- | --- |
| 25 | 2.2 | **Tabelas** |  | 10d? | 2018-04-09 13:30 | 2018-04-30 14:30 |  | 36d |  |  |  | 1h | 5 |  |
| 26 | 2.2.1 | criar tabela utilizadores comuns |  | 1h | 2018-04-30 13:30 | 2018-04-30 14:30 |  | 36d |  | start no earlier than 2018-04-30 08:00 | Flávio | 1h | 5 |  |
| 27 | 2.2.2 | criar tabela livros |  | 1d? | 2018-04-09 13:30 | 2018-04-09 15:30 |  | 45d |  |  |  |  |  |  |
| 28 | 2.2.3 | criar tabela requisições |  | 1d? | 2018-04-09 13:30 | 2018-04-09 15:30 |  | 45d |  |  |  |  |  |  |
| 29 | 2.2.4 | adicionar linhas tabelas |  | 1d? | 2018-04-09 13:30 | 2018-04-09 15:30 |  | 45d |  |  |  |  |  |  |
| 30 | 2.2.5 | editar linhas tabelas |  | 1d? | 2018-04-09 13:30 | 2018-04-09 15:30 |  | 45d |  |  |  |  |  |  |
| 31 | 2.2.6 | apagar linhas tabelas |  | 1d? | 2018-04-09 13:30 | 2018-04-09 15:30 |  | 45d |  |  |  |  |  |  |
| 32 | 2.3 | Janela de Informação |  | 2h | 2018-04-25 10:30 | 2018-04-25 12:30 | 1 | 36.5d |  |  |  |  |  |  |
| 33 | 2.4 | Registo de requisições |  | 2d | 2018-04-09 13:30 | 2018-04-10 15:30 |  | 42d | 0d |  |  |  |  | mais rh e mais tempo |
| 34 | 2.5 | Devolução de requisições |  | 2h? | 2018-04-16 13:30 | 2018-04-16 15:30 | 33 | 42d | 0d |  |  |  |  |  |
| 35 | 2.6 | Edição de requisições |  | 2h? | 2018-04-17 13:30 | 2018-04-17 15:30 | 34 | 42d |  |  |  |  |  |  |
| 36 | 2.7 | pesquisa de requisitos por aluno |  | 2h? | 2018-04-09 13:30 | 2018-04-09 15:30 |  | 35d | 0d |  |  |  |  |  |
| 37 | 2.8 | pesquisa de requisitos por livro |  | 2h? | 2018-04-10 13:30 | 2018-04-10 15:30 | 36 | 35d | 0d |  |  |  |  |  |
| 38 | 2.9 | Pesquisar qualquer tabela por qualquer campo |  | 10h | 2018-04-16 13:30 | 2018-04-24 14:00 | 37 | 35d | 12d |  |  |  |  |  |
| 39 | 3 | Reunião 22/5 | manual | 2h | 2018-05-22 08:00 | 2018-05-22 10:00 |  |  |  |  |  |  |  |  |
| 40 | 4 | Conclusão Sprint 1 | milestone | 0d | 2018-05-22 10:00 | 2018-05-22 10:00 | 39 | 12.25d | 0d |  |  |  |  |  |
| 41 | 5 | **Sprint 2** |  | 15d | 2018-05-16 09:00 | 2018-06-12 16:00 |  | 12d |  |  |  | 34h | 170 |  |
| 42 | 5.1 | **save/load** |  | 6d | 2018-05-22 13:30 | 2018-05-30 11:30 |  | 12.25d | 0d |  |  | 12h | 60 |  |
| 43 | 5.1.1 | Save state .bin |  | 3h | 2018-05-22 13:30 | 2018-05-23 10:00 | 40 | 12.25d | 0d |  | André [50%]; Flávio [50%] | 3h | 15 |  |
| 44 | 5.1.2 | load state .bin |  | 3h | 2018-05-23 10:00 | 2018-05-28 14:00 | 43 | 12.25d | 0d |  | André [50%]; Flávio [50%] | 3h | 15 |  |
| 45 | 5.1.3 | importar tabelas .csv |  | 3h | 2018-05-28 14:00 | 2018-05-29 15:00 | 44 | 12.25d | 0d |  | André [50%]; Flávio [50%] | 3h | 15 |  |
| 46 | 5.1.4 | exportar tabelas .csv |  | 3h | 2018-05-29 15:00 | 2018-05-30 11:30 | 45 | 12.25d |  |  | André [50%]; Flávio [50%] | 3h | 15 |  |
| 47 | 5.2 | bloquear falta de permissões |  | 12h | 2018-05-30 11:30 | 2018-06-12 15:00 | 50, 42 | 12.25d |  |  | André [50%]; Flávio [50%] | 12h | 60 | mais rh e mais tempo |
| 48 | 5.3 | Ocultar colunas nas pesquisas a pedido do utilizador |  | 8h | 2018-05-16 09:00 | 2018-05-23 09:30 | 38 | 23d |  | start no earlier than 2018-05-16 08:00 | André [50%]; Flávio [50%] | 8h | 40 |  |

| ID | WBS | Task | Type | Duration | Start | Finish | Predecessors | Total slack | Free slack | Constraint | Resources | Work | Cost | Acção |
| --- | --- | --- | --- | --- | --- | --- | --- | --- | --- | --- | --- | --- | --- | --- |
| 49 | 5.4 | **scene de login** |  | 1d | 2018-05-22 13:30 | 2018-05-22 15:30 |  | 17.25d |  |  |  | 2h | 10 |  |
| 50 | 5.4.1 | Login |  | 2h | 2018-05-22 13:30 | 2018-05-22 15:30 | 40 | 17.25d | 5d |  | André [50%]; Flávio [50%] | 2h | 10 | mais tempo |
| 51 | 5.5 | Reunião 12/6 | manual | 4d | 2018-06-12 08:00 | 2018-06-12 16:00 |  |  |  |  |  |  |  |  |
| 52 | 5.6 | Conclusão sprint 2 | milestone | 0d | 2018-06-12 16:00 | 2018-06-12 16:00 | 51 | 0d |  |  |  |  |  |  |
| 53 | 6 | Conclusão do projeto |  | 12d | 2018-06-13 09:00 | 2018-07-04 10:30 | 52 | 0d |  | finish no earlier than 2018-06-16 17:00 |  |  |  |  |
